| activity_id | activity_name | planned_start | planned_finish | duration | level1 | level2 | state | status | progress |
| --- | --- | --- | --- | --- | --- | --- | --- | --- | --- |
| A1000 | Mobilization of 1st set of SPMT; Asembly + Function Test | 2026-01-26 | 2026-01-26 | 1 | MOBILIZATION | SPMT | planned | active | 0 |
| A1001 | Mobilization of Marine Equipment and Steelworks | 2026-01-26 | 2026-01-26 | 0 | MOBILIZATION | MARINE | planned | active | 0 |
| A2000 | Demobilization of Marine Equipment and Steelworks | 2026-01-28 | 2026-01-28 | 1 | DEMOBILIZATION | MARINE | planned | active | 0 |
| A2010 | Mobilization of Jacking Equipment and Steel bridge (prior LCT's arrival to AGI with TR 1&2!)) | 2026-02-01 | 2026-02-02 | 1 | MOBILIZATION | JACKING EQUIPMENT, STEEL BRIDGE | planned | active | 0 |
| A1010 | Mobilization of 2nd set of SPMT; Assembly + Function test | 2026-02-07 | 2026-02-07 | 1 | MOBILIZATION | SPMT | planned | active | 0 |
| A1980 | Demobilization of 2nd set of SPMT | 2026-03-18 | 2026-03-18 | 1 | DEMOBILIZATION | SPMT | planned | active | 0 |
| A1990 | Demobilization of 1st set of SPMT | 2026-03-22 | 2026-03-23 | 1 | DEMOBILIZATION | SPMT | planned | active | 0 |
| A2020 | Demobilization of Jacking Equipment and Steel bridge | 2026-03-25 | 2026-03-25 | 1 | DEMOBILIZATION | JACKING EQUIPMENT, STEEL BRIDGE | planned | active | 0 |
| A1002 | Beam Replacement AGI TR Unit 1 (TR Bay 4) - Two 5t forklifts required | 2026-01-28 | 2026-01-28 | 1 | OPERATIONAL | Beam Replacement | planned | active | 0 |
| A1004 | Deck Preparations (D-ring cutting; marking, steel sets installation) - One 5t forklift and Crane required | 2026-01-28 | 2026-01-28 | 1 | OPERATIONAL | Deck Preparations | planned | active | 0 |
| A1005 | Deck Preparations (Steel sets installation, welding) - Crane Required for steel sets installation | 2026-01-29 | 2026-01-29 | 1 | OPERATIONAL | Deck Preparations | planned | active | 0 |
| A1030 | Loading of AGI TR Unit 1 on SPMT; lashing; Shifting to Mina Zayed Port RoRo Jetty area | 2026-01-31 | 2026-01-31 | 0 | OPERATIONAL | AGI TR Unit 1 | planned | active | 0 |
| A1040 | RoRo Ramp Installation - 5t Frokift and Crane required | 2026-01-31 | 2026-01-31 | 0 | OPERATIONAL | AGI TR Unit 1 | planned | active | 0 |
| A1060 | Load-out of AGL TR Unit 1; stool down (8am-10am) | 2026-01-31 | 2026-01-31 | 0 | OPERATIONAL | AGI TR Unit 1 | planned | active | 0 |
| A1070 | RoRo ramp removal; Seafastening AGL TR Unit 1 - Crane required | 2026-01-31 | 2026-02-02 | 1 | OPERATIONAL | AGI TR Unit 1 | planned | active | 0 |
| A1081 | MWS; MPI; Sail-away - Marine Transportation by LCT to Al Ghallan Island | 2026-02-03 | 2026-02-03 | 1 | OPERATIONAL | AGI TR Unit 1 | planned | active | 0 |
| A1090 | MMT Crew Mob to AGI; Site Induction; Meeting with Client | 2026-02-04 | 2026-02-04 | 0 | OPERATIONAL | AGI TR Unit 1 | planned | active | 0 |
| A1091 | LCT Arrival; Berthing at AGL RoRo Jetty | 2026-02-04 | 2026-02-04 | 0 | OPERATIONAL | AGI TR Unit 1 | planned | active | 0 |
| A1100 | Unlashing and cutting; steel sets preparations - Forklift required | 2026-02-04 | 2026-02-04 | 0 | OPERATIONAL | AGI TR Unit 1 | planned | active | 0 |
| A1110 | Load-in of AGI TR Unit 1 (including RoRo Ramp Installation); store on Jetty - Crane required | 2026-02-05 | 2026-02-05 | 1 | OPERATIONAL | AGI TR Unit 1 | planned | active | 0 |
| A1121 | LCT Sails back to MZP to collect TR Unit 1 | 2026-02-06 | 2026-02-06 | 1 | OPERATIONAL | AGI TR Unit 1 | planned | active | 0 |
| A1122 | Steel bridge Installation - Crane required | 2026-02-06 | 2026-02-06 | 0 | OPERATIONAL | AGI TR Unit 1 | planned | active | 0 |
| A1140 | AGL TR Unit 1 (TR Bay 4) load on SPMT; lashing; Transportation and JD (steel set to be delivered to bay area by trailer) | 2026-02-06 | 2026-02-06 | 0 | OPERATIONAL | AGI TR Unit 1 | planned | active | 0 |
| A1141 | Turning of AGI TR Unit 1 (TR Bay 4) - 10t Forklift required | 2026-02-07 | 2026-02-09 | 3 | OPERATIONAL | AGI TR Unit 1 | planned | active | 0 |
| A1181 | SPMT shifting back to Port | 2026-02-08 | 2026-02-08 | 0 | OPERATIONAL | AGI TR Unit 1 | planned | active | 0 |
| A1150 | Jacking down of AGI TR Unit 1 (TR Bay 4) on temporary support - Forklift required | 2026-02-10 | 2026-02-10 | 1 | OPERATIONAL | AGI TR Unit 1 | planned | active | 0 |
| A1003 | Beam Replacement AGI TR Unit 2 (TR Bay 3) - Two 5t forklifts required | 2026-01-29 | 2026-01-29 | 1 | OPERATIONAL | Beam Replacement | planned | active | 0 |
| A2029 | LCT Arrives at MZP; Deck preparations | 2026-02-07 | 2026-02-07 | 1 | OPERATIONAL | AGI TR Unit 2 | planned | active | 0 |
| A2030 | Loading of AGI TR Unit 2 on SPMT; lashing; Shifting to Mina Zayed Port RoRo Jetty area | 2026-02-08 | 2026-02-08 | 0 | OPERATIONAL | AGI TR Unit 2 | planned | active | 0 |
| A2040 | RoRo Ramp Installation - 5t Frokift and Crane required | 2026-02-08 | 2026-02-08 | 0 | OPERATIONAL | AGI TR Unit 2 | planned | active | 0 |
| A2050 | Load-out of AGL TR Unit 2; stool down | 2026-02-08 | 2026-02-08 | 0 | OPERATIONAL | AGI TR Unit 2 | planned | active | 0 |
| A2060 | RoRo ramp removal; Seafastening AGL TR Unit 2 - Crane required | 2026-02-08 | 2026-02-09 | 1 | OPERATIONAL | AGI TR Unit 2 | planned | active | 0 |
| A2070 | MWS; MPI; Sail-away - Marine Transportation by LCT to Al Ghallan Island | 2026-02-10 | 2026-02-10 | 1 | OPERATIONAL | AGI TR Unit 2 | planned | active | 0 |
| A2090 | LCT Arrival; Berthing at AGL RoRo Jetty | 2026-02-11 | 2026-02-11 | 0 | OPERATIONAL | AGI TR Unit 2 | planned | active | 0 |
| A2100 | Unlashing and cutting; steel sets preparations - Forklift required | 2026-02-11 | 2026-02-11 | 0 | OPERATIONAL | AGI TR Unit 2 | planned | active | 0 |
| A2110 | Load-in of AGI TR Unit 2 (including RoRo Ramp Installation); store on Jetty - Crane required | 2026-02-12 | 2026-02-12 | 1 | OPERATIONAL | AGI TR Unit 2 | planned | active | 0 |
| A2120 | LCT Sails back to MZP to collect TR Unit 3 (SPMT to bring back 2pcs of 7.45m transport beam) | 2026-02-13 | 2026-02-13 | 1 | OPERATIONAL | AGI TR Unit 2 | planned | active | 0 |
| A2130 | Steel bridge Installation - Crane required | 2026-02-13 | 2026-02-13 | 0 | OPERATIONAL | AGI TR Unit 2 | planned | active | 0 |
| A2140 | AGL TR Unit 2 (TR Bay 3) load on SPMT; lashing; Transportation and JD (steel set to be delivered to bay area by trailer) | 2026-02-13 | 2026-02-13 | 0 | OPERATIONAL | AGI TR Unit 2 | planned | active | 0 |
| A2150 | Turning of AGI TR Unit 2 (TR Bay 3) - 10t Forklift required | 2026-02-14 | 2026-02-16 | 3 | OPERATIONAL | AGI TR Unit 2 | planned | active | 0 |
| A2170 | SPMT shifting back to Port | 2026-02-15 | 2026-02-15 | 0 | OPERATIONAL | AGI TR Unit 2 | planned | active | 0 |
| A2160 | Jacking down of AGI TR Unit 2 (TR Bay 3) on temporary support - Forklift required | 2026-02-17 | 2026-02-17 | 1 | OPERATIONAL | AGI TR Unit 2 | planned | active | 0 |
| A1013 | Beam Replacement AGI TR Unit 3 (TR Bay 2) - Two 5t forklifts required | 2026-02-14 | 2026-02-14 | 1 | OPERATIONAL | Beam Replacement | planned | active | 0 |
| A2180 | LCT Arrives at MZP; Deck preparations; Beam replacement | 2026-02-14 | 2026-02-14 | 1 | OPERATIONAL | AGI TR Unit 3 | planned | active | 0 |
| A2190 | Loading of AGI TR Unit 3 on SPMT; lashing; Shifting to Mina Zayed Port RoRo Jetty area | 2026-02-15 | 2026-02-15 | 0 | OPERATIONAL | AGI TR Unit 3 | planned | active | 0 |
| A2200 | RoRo Ramp Installation - 5t Frokift and Crane required | 2026-02-15 | 2026-02-15 | 0 | OPERATIONAL | AGI TR Unit 3 | planned | active | 0 |
| A2210 | Load-out of AGL TR Unit 3; stool down | 2026-02-15 | 2026-02-15 | 0 | OPERATIONAL | AGI TR Unit 3 | planned | active | 0 |
| A2220 | RoRo ramp removal; Seafastening AGL TR Unit 3 - Crane required | 2026-02-15 | 2026-02-16 | 1 | OPERATIONAL | AGI TR Unit 3 | planned | active | 0 |
| A2230 | MWS; MPI; Sail-away - Marine Transportation by LCT to Al Ghallan Island | 2026-02-17 | 2026-02-17 | 1 | OPERATIONAL | AGI TR Unit 3 | planned | active | 0 |
| A2250 | LCT Arrival; Berthing at AGL RoRo Jetty | 2026-02-18 | 2026-02-18 | 0 | OPERATIONAL | AGI TR Unit 3 | planned | active | 0 |
| A2260 | Unlashing and cutting; steel sets preparations - Forklift required | 2026-02-18 | 2026-02-18 | 0 | OPERATIONAL | AGI TR Unit 3 | planned | active | 0 |
| A2270 | Load-in of AGI TR Unit 3 (including RoRo Ramp Installation); store on Jetty - Crane required | 2026-02-19 | 2026-02-19 | 1 | OPERATIONAL | AGI TR Unit 3 | planned | active | 0 |
| A2280 | LCT Sails back to MZP to collect TR Unit 4 | 2026-02-20 | 2026-02-20 | 1 | OPERATIONAL | AGI TR Unit 3 | planned | active | 0 |
| A2290 | Steel bridge Installation - Crane required | 2026-02-20 | 2026-02-20 | 0 | OPERATIONAL | AGI TR Unit 3 | planned | active | 0 |
| A2300 | AGL TR Unit 3 (TR Bay 2) load on SPMT; lashing; Transportation and JD (steel set to be delivered to bay area by trailer) | 2026-02-20 | 2026-02-20 | 0 | OPERATIONAL | AGI TR Unit 3 | planned | active | 0 |
| A2310 | Turning of AGI TR Unit 3 (TR Bay 2) - 10t Forklift required | 2026-02-21 | 2026-02-23 | 3 | OPERATIONAL | AGI TR Unit 3 | planned | active | 0 |
| A2330 | SPMT shifting back to Port | 2026-02-22 | 2026-02-22 | 0 | OPERATIONAL | AGI TR Unit 3 | planned | active | 0 |
| A2320 | Jacking down of AGI TR Unit 3 (TR Bay 2) on temporary support - Forklift required | 2026-02-24 | 2026-02-24 | 1 | OPERATIONAL | AGI TR Unit 3 | planned | active | 0 |
| A1023 | Beam Replacement AGI TR Unit 4 (TR Bay 1) - Two 5t forklifts required | 2026-02-21 | 2026-02-21 | 1 | OPERATIONAL | Beam Replacement | planned | active | 0 |
| A2340 | LCT Arrives at MZP; Deck preparations; Beam replacement | 2026-02-21 | 2026-02-21 | 1 | OPERATIONAL | AGI TR Unit 4 | planned | active | 0 |
| A2350 | Loading of AGI TR Unit 4 on SPMT; lashing; Shifting to Mina Zayed Port RoRo Jetty area | 2026-02-22 | 2026-02-22 | 0 | OPERATIONAL | AGI TR Unit 4 | planned | active | 0 |
| A2360 | RoRo Ramp Installation - 5t Frokift and Crane required | 2026-02-22 | 2026-02-22 | 0 | OPERATIONAL | AGI TR Unit 4 | planned | active | 0 |
| A2370 | Load-out of AGL TR Unit 4; stool down | 2026-02-22 | 2026-02-22 | 0 | OPERATIONAL | AGI TR Unit 4 | planned | active | 0 |
| A2380 | RoRo ramp removal; Seafastening AGL TR Unit 4 - Crane required | 2026-02-22 | 2026-02-23 | 1 | OPERATIONAL | AGI TR Unit 4 | planned | active | 0 |
| A2390 | MWS; MPI; Sail-away - Marine Transportation by LCT to Al Ghallan Island | 2026-02-24 | 2026-02-24 | 1 | OPERATIONAL | AGI TR Unit 4 | planned | active | 0 |
| A2410 | LCT Arrival; Berthing at AGL RoRo Jetty | 2026-02-25 | 2026-02-25 | 0 | OPERATIONAL | AGI TR Unit 4 | planned | active | 0 |
| A2420 | Unlashing and cutting; steel sets preparations - Forklift required | 2026-02-25 | 2026-02-25 | 0 | OPERATIONAL | AGI TR Unit 4 | planned | active | 0 |
| A2430 | Load-in of AGI TR Unit 4 (including RoRo Ramp Installation); store on Jetty - Crane required | 2026-02-26 | 2026-02-26 | 1 | OPERATIONAL | AGI TR Unit 4 | planned | active | 0 |
| A2440 | LCT Sails back to MZP to collect TR Unit 5 | 2026-02-27 | 2026-02-27 | 1 | OPERATIONAL | AGI TR Unit 4 | planned | active | 0 |
| A2450 | Steel bridge Installation - Crane required | 2026-02-27 | 2026-02-27 | 0 | OPERATIONAL | AGI TR Unit 4 | planned | active | 0 |

| activity_id | activity_name | planned_start | planned_finish | duration | level1 | level2 | state | status | progress |
| --- | --- | --- | --- | --- | --- | --- | --- | --- | --- |
| A2460 | AGL TR Unit 4 (TR Bay 1) load on SPMT; lashing; Transportation and JD (steel set to be delivered to bay area by trailer) | 2026-02-27 | 2026-02-27 | 0 | OPERATIONAL | AGI TR Unit 4 | planned | active | 0 |
| A2470 | Turning of AGI TR Unit 4 (TR Bay 1) - 10t Forklift required | 2026-02-28 | 2026-03-02 | 3 | OPERATIONAL | AGI TR Unit 4 | planned | active | 0 |
| A2490 | SPMT shifting back to Port | 2026-03-01 | 2026-03-01 | 0 | OPERATIONAL | AGI TR Unit 4 | planned | active | 0 |
| A2480 | Jacking down of AGI TR Unit 4 (TR Bay 1) on temporary support - Forklift required | 2026-03-03 | 2026-03-03 | 1 | OPERATIONAL | AGI TR Unit 4 | planned | active | 0 |
| A1033 | Beam Replacement AGI TR Unit 5 (TR Bay 5) - Two 5t forklifts required | 2026-02-28 | 2026-02-28 | 1 | OPERATIONAL | Beam Replacement | planned | active | 0 |
| A2500 | LCT Arrives at MZP; Deck preparations; Beam replacement | 2026-02-28 | 2026-02-28 | 1 | OPERATIONAL | AGI TR Unit 5 | planned | active | 0 |
| A2510 | Loading of AGI TR Unit 5 on SPMT; lashing; Shifting to Mina Zayed Port RoRo Jetty area | 2026-03-01 | 2026-03-01 | 0 | OPERATIONAL | AGI TR Unit 5 | planned | active | 0 |
| A2520 | RoRo Ramp Installation - 5t Frokift and Crane required | 2026-03-01 | 2026-03-01 | 0 | OPERATIONAL | AGI TR Unit 5 | planned | active | 0 |
| A2530 | Load-out of AGL TR Unit 5; stool down | 2026-03-01 | 2026-03-01 | 0 | OPERATIONAL | AGI TR Unit 5 | planned | active | 0 |
| A2540 | RoRo ramp removal; Seafastening AGL TR Unit 5 - Crane required | 2026-03-01 | 2026-03-02 | 1 | OPERATIONAL | AGI TR Unit 5 | planned | active | 0 |
| A2550 | MWS; MPI; Sail-away - Marine Transportation by LCT to Al Ghallan Island | 2026-03-03 | 2026-03-03 | 1 | OPERATIONAL | AGI TR Unit 5 | planned | active | 0 |
| A2560 | LCT Arrival; Berthing at AGL RoRo Jetty | 2026-03-04 | 2026-03-04 | 0 | OPERATIONAL | AGI TR Unit 5 | planned | active | 0 |
| A2570 | Unlashing and cutting; steel sets preparations - Forklift required | 2026-03-04 | 2026-03-04 | 0 | OPERATIONAL | AGI TR Unit 5 | planned | active | 0 |
| A2580 | Load-in of AGI TR Unit 5 (including RoRo Ramp Installation); store on Jetty - Crane required | 2026-03-05 | 2026-03-05 | 1 | OPERATIONAL | AGI TR Unit 5 | planned | active | 0 |
| A2590 | LCT Sails back to MZP to collect TR Unit 6 | 2026-03-06 | 2026-03-06 | 1 | OPERATIONAL | AGI TR Unit 5 | planned | active | 0 |
| A2600 | Steel bridge Installation - Crane required | 2026-03-06 | 2026-03-06 | 0 | OPERATIONAL | AGI TR Unit 5 | planned | active | 0 |
| A2610 | AGL TR Unit 5 (TR Bay 5) load on SPMT; lashing; Transportation and JD (steel set to be delivered to bay area by trailer) | 2026-03-06 | 2026-03-06 | 0 | OPERATIONAL | AGI TR Unit 5 | planned | active | 0 |
| A2620 | Turning of AGI TR Unit 5 (TR Bay 5) - 10t Forklift required | 2026-03-07 | 2026-03-09 | 3 | OPERATIONAL | AGI TR Unit 5 | planned | active | 0 |
| A2640 | SPMT shifting back to Port | 2026-03-08 | 2026-03-08 | 0 | OPERATIONAL | AGI TR Unit 5 | planned | active | 0 |
| A2630 | Jacking down of AGI TR Unit 5 (TR Bay 5) on temporary support - Forklift required | 2026-03-10 | 2026-03-10 | 1 | OPERATIONAL | AGI TR Unit 5 | planned | active | 0 |
| A1043 | Beam Replacement AGI TR Unit 6 (TR Bay 6) - Two 5t forklifts required | 2026-03-07 | 2026-03-07 | 1 | OPERATIONAL | Beam Replacement | planned | active | 0 |
| A2650 | LCT Arrives at MZP; Deck preparations; Beam replacement | 2026-03-07 | 2026-03-07 | 1 | OPERATIONAL | AGI TR Unit 6 | planned | active | 0 |
| A2660 | Loading of AGI TR Unit 6 on SPMT; lashing; Shifting to Mina Zayed Port RoRo Jetty area | 2026-03-08 | 2026-03-08 | 0 | OPERATIONAL | AGI TR Unit 6 | planned | active | 0 |
| A2670 | RoRo Ramp Installation - 5t Frokift and Crane required | 2026-03-08 | 2026-03-08 | 0 | OPERATIONAL | AGI TR Unit 6 | planned | active | 0 |
| A2680 | Load-out of AGL TR Unit 6; stool down | 2026-03-08 | 2026-03-08 | 0 | OPERATIONAL | AGI TR Unit 6 | planned | active | 0 |
| A2690 | RoRo ramp removal; Seafastening AGL TR Unit 6 - Crane required | 2026-03-08 | 2026-03-09 | 1 | OPERATIONAL | AGI TR Unit 6 | planned | active | 0 |
| A2700 | MWS; MPI; Sail-away - Marine Transportation by LCT to Al Ghallan Island | 2026-03-10 | 2026-03-10 | 1 | OPERATIONAL | AGI TR Unit 6 | planned | active | 0 |
| A2710 | LCT Arrival; Berthing at AGL RoRo Jetty | 2026-03-11 | 2026-03-11 | 0 | OPERATIONAL | AGI TR Unit 6 | planned | active | 0 |
| A2720 | Unlashing and cutting; steel sets preparations - Forklift required | 2026-03-11 | 2026-03-11 | 0 | OPERATIONAL | AGI TR Unit 6 | planned | active | 0 |
| A2730 | Load-in of AGI TR Unit 6 (including RoRo Ramp Installation); store on Jetty - Crane required | 2026-03-12 | 2026-03-12 | 1 | OPERATIONAL | AGI TR Unit 6 | planned | active | 0 |
| A2740 | LCT Sails back to MZP to collect TR Unit 7 | 2026-03-13 | 2026-03-13 | 1 | OPERATIONAL | AGI TR Unit 6 | planned | active | 0 |
| A2750 | Steel bridge Installation - Crane required | 2026-03-13 | 2026-03-13 | 0 | OPERATIONAL | AGI TR Unit 6 | planned | active | 0 |
| A2760 | AGL TR Unit 6 (TR Bay 6) load on SPMT; lashing; Transportation and JD (steel set to be delivered to bay area by trailer) | 2026-03-13 | 2026-03-13 | 0 | OPERATIONAL | AGI TR Unit 6 | planned | active | 0 |
| A2770 | Turning of AGI TR Unit 6 (TR Bay 6) - 10t Forklift required | 2026-03-14 | 2026-03-16 | 3 | OPERATIONAL | AGI TR Unit 6 | planned | active | 0 |
| A2790 | SPMT shifting back to Port | 2026-03-15 | 2026-03-15 | 0 | OPERATIONAL | AGI TR Unit 6 | planned | active | 0 |
| A2780 | Jacking down of AGI TR Unit 6 (TR Bay 6) on temporary support - Forklift required | 2026-03-17 | 2026-03-17 | 1 | OPERATIONAL | AGI TR Unit 6 | planned | active | 0 |
| A1053 | Beam Replacement AGI TR Unit 7 (TR Bay 7) - Two 5t forklifts required | 2026-03-14 | 2026-03-14 | 1 | OPERATIONAL | Beam Replacement | planned | active | 0 |
| A2800 | LCT Arrives at MZP; Deck preparations; Beam replacement | 2026-03-14 | 2026-03-14 | 1 | OPERATIONAL | AGI TR Unit 7 | planned | active | 0 |
| A2810 | Loading of AGI TR Unit 7 on SPMT; lashing; Shifting to Mina Zayed Port RoRo Jetty area | 2026-03-15 | 2026-03-15 | 0 | OPERATIONAL | AGI TR Unit 7 | planned | active | 0 |
| A2820 | RoRo Ramp Installation - 5t Frokift and Crane required | 2026-03-15 | 2026-03-15 | 0 | OPERATIONAL | AGI TR Unit 7 | planned | active | 0 |
| A2830 | Load-out of AGL TR Unit 7; stool down | 2026-03-15 | 2026-03-15 | 0 | OPERATIONAL | AGI TR Unit 7 | planned | active | 0 |
| A2840 | RoRo ramp removal; Seafastening AGL TR Unit 7 - Crane required | 2026-03-15 | 2026-03-16 | 1 | OPERATIONAL | AGI TR Unit 7 | planned | active | 0 |
| A2850 | MWS; MPI; Sail-away - Marine Transportation by LCT to Al Ghallan Island | 2026-03-17 | 2026-03-17 | 1 | OPERATIONAL | AGI TR Unit 7 | planned | active | 0 |
| A2860 | LCT Arrival; Berthing at AGL RoRo Jetty | 2026-03-18 | 2026-03-18 | 0 | OPERATIONAL | AGI TR Unit 7 | planned | active | 0 |
| A2870 | Unlashing and cutting; steel sets preparations - Forklift required | 2026-03-18 | 2026-03-18 | 0 | OPERATIONAL | AGI TR Unit 7 | planned | active | 0 |
| A2880 | Load-in of AGI TR Unit 7 (including RoRo Ramp Installation); store on Jetty - Crane required | 2026-03-19 | 2026-03-19 | 1 | OPERATIONAL | AGI TR Unit 7 | planned | active | 0 |
| A2900 | Steel bridge Installation - Crane required | 2026-03-20 | 2026-03-20 | 0 | OPERATIONAL | AGI TR Unit 7 | planned | active | 0 |
| A2910 | AGL TR Unit 7 (TR Bay 7) load on SPMT; lashing; Transportation and JD (steel set to be delivered to bay area by trailer) | 2026-03-20 | 2026-03-20 | 0 | OPERATIONAL | AGI TR Unit 7 | planned | active | 0 |
| A2920 | Turning of AGI TR Unit 7 (TR Bay 7) - 10t Forklift required | 2026-03-21 | 2026-03-23 | 3 | OPERATIONAL | AGI TR Unit 7 | planned | active | 0 |
| A2940 | SPMT shifting back to Port | 2026-03-22 | 2026-03-22 | 0 | OPERATIONAL | AGI TR Unit 7 | planned | active | 0 |
| A2930 | Jacking down of AGI TR Unit 7 (TR Bay 7) on temporary support - Forklift required | 2026-03-24 | 2026-03-24 | 1 | OPERATIONAL | AGI TR Unit 7 | planned | active | 0 |
